# C-121 Programme to Complete 28.11.24

Schedule from MS Project, 2025-03-20 to 2026-04-20.

## Calendars

- Standard: Mon-Fri 08:00-12:00, 13:00-17:00; Sat-Sun off. Exceptions (off unless hours are given): 2025-03-29 08:00-12:00, 13:00-17:00 (weekend 29.03), 2025-04-05 08:00-12:00, 13:00-17:00 (Sat working 5.04), 2025-04-12 08:00-12:00, 13:00-17:00 (12.04), 2025-12-22 to 2026-01-02 (Xmas and NY 25).

## Resources

| Resource |
| --- |
| WIlcarry 171 |
| WIlcarry 1717 |
| v |
| GPS Boxer |
| Landside |
| Landside gang |
| Landside crane |
| ICS |
| Ayesa |
| EDD |
| ISC |
| 1 |
| WIlcarry 1711 |
| Marine |
| crane barge |
| Top hat gang |
| GPSMACS |
| GPS MACS |

## Schedule

| ID | WBS | Task | Type | Duration | Start | Finish | Predecessors | Total slack | Free slack | Constraint | Resources | Work |
| --- | --- | --- | --- | --- | --- | --- | --- | --- | --- | --- | --- | --- |
| 1 | 1 | **C-121 Cory WTS Target Programme 02.04.25** |  | 275d | 2025-03-20 | 2026-04-20 |  | 0d |  |  |  | 3188h |
| 2 | 1.1 | **Marine Piling** |  | 11.5d | 2025-04-02 | 2025-04-15 |  | 0d |  |  |  | 76h |
| 3 | 1.1.1 | GL E / 1 - 7 Marine Piles (1no.) |  | 1.5d | 2025-04-02 | 2025-04-03 |  | 0d |  |  | crane barge | 12h |
| 4 | 1.1.2 | ISC confirm piles 103, 104, 102a and 103a can be installed | milestone, manual | 0d | 2025-04-03 | 2025-04-03 | 3 |  |  |  | ISC |  |
| 5 | 1.1.3 | GL D / 103, 104 |  | 1d | 2025-04-03 | 2025-04-04 | 4 | 0d |  |  |  |  |
| 6 | 1.1.4 | Additional Scope: Install Piles 102a and 103a |  | 1d | 2025-04-04 | 2025-04-05 | 5 | 0d |  |  |  |  |
| 7 | 1.1.5 | GL D / 2 - 7 Marine Piles (6no.) |  | 3d | 2025-04-05 | 2025-04-09 | 6 | 0d |  |  | crane barge | 24h |
| 8 | 1.1.6 | Demob crane barge |  | 5d | 2025-04-09 | 2025-04-15 | 7 | 0d |  |  | crane barge | 40h |
| 10 | 1.2 | **Quayside Piling** |  | 68.5d | 2025-03-28 | 2025-06-27 |  | 2.5d |  |  |  | 224h |
| 11 | 1.2.1 | GPS MACS to provide track pressures for mat construction | milestone, manual | 0d | 2025-04-08 | 2025-04-08 | 12SS-5d |  |  |  | GPS MACS |  |
| 12 | 1.2.2 | ISC extend landside crane mat | milestone | 0d | 2025-04-14 | 2025-04-14 | 14 | 255d | 0d |  | ISC |  |
| 13 | 1.2.3 | **Mobilisation** |  | 2d | 2025-04-11 | 2025-04-14 |  | 0d |  |  |  | 24h |
| 14 | 1.2.3.1 | Mobilise 300T crawler crane |  | 2d | 2025-04-11 | 2025-04-14 | 8SS+2d | 0d |  |  | Landside | 16h |
| 15 | 1.2.3.2 | ISC provide tracking route to workfront | milestone, manual | 0d | 2025-04-14 | 2025-04-14 | 14 |  |  |  | ISC |  |
| 16 | 1.2.3.3 | Mobilise gate, hammers, and equipment |  | 1d | 2025-04-11 | 2025-04-12 | 14SS | 256d |  |  | Landside | 8h |
| 17 | 1.2.4 | **Piling (Orignial Scope)** |  | 8d | 2025-04-14 | 2025-04-24 |  | 0d |  |  |  | 64h |
| 18 | 1.2.4.1 | Pile gate configuration |  | 2d | 2025-04-14 | 2025-04-16 | 14 | 0d |  |  | Landside | 16h |
| 19 | 1.2.4.2 | GL B / 1 - 7 Landside Piles (3no.) |  | 1.5d | 2025-04-16 | 2025-04-17 | 18 | 0d |  |  | Landside | 12h |
| 20 | 1.2.4.3 | GL C / 1 - 7 Landside Piles (9no) |  | 4.5d | 2025-04-18 | 2025-04-24 | 19 | 0d |  |  | Landside | 36h |
| 21 | 1.2.5 | **Additional Piles at Debden GL 1 - 7 / A - C)** |  | 36.5d | 2025-03-28 | 2025-05-14 |  | 2.5d |  |  |  | 112h |
| 22 | 1.2.5.1 | ISC instruction issued to GPS MACS for pile supply and install | milestone | 0d | 2025-03-28 | 2025-03-28 |  | 2.5d | 0d | start no earlier than 2025-03-28 | ISC |  |
| 23 | 1.2.5.2 | Procurement of 5no. Piles - lead estimated |  | 20d | 2025-03-28 | 2025-04-21 | 22 | 2.5d |  |  |  |  |
| 24 | 1.2.5.3 | ISC to break out Debden slab to allow install of Pile P51a and 25b | milestone | 0d | 2025-04-23 | 2025-04-23 | 25SS-1d | 248d |  |  | ISC |  |
| 25 | 1.2.5.4 | Install 5no. Piles |  | 11d | 2025-04-24 | 2025-05-09 | 23, 20 | 0d |  |  | Landside | 88h |
| 26 | 1.2.5.5 | Install 7no. Top hats |  | 3d | 2025-05-09 | 2025-05-14 | 25 | 0d |  |  | Landside | 24h |

| ID | WBS | Task | Type | Duration | Start | Finish | Predecessors | Total slack | Free slack | Resources | Work |
| --- | --- | --- | --- | --- | --- | --- | --- | --- | --- | --- | --- |
| 27 | 1.2.6 | **Demobilisation** |  | 2d | 2025-06-25 | 2025-06-27 |  | 0d |  |  | 24h |
| 28 | 1.2.6.1 | ISC provide tracking route for 300T crane to demob location | milestone, manual | 0d | 2025-06-25 | 2025-06-25 | 29SS |  |  | ISC |  |
| 29 | 1.2.6.2 | Demobilise 300T crawler crane |  | 2d | 2025-06-25 | 2025-06-27 | 86 | 0d |  | Landside | 16h |
| 30 | 1.2.6.3 | Demob plant and equipment |  | 1d | 2025-06-25 | 2025-06-26 | 29SS | 202d |  | Landside | 8h |
| 32 | 1.3 | **Top Hats** |  | 111.5d | 2025-04-02 | 2025-09-02 |  | 57.5d |  |  | 264h |
| 33 | 1.3.1 | **GL A - E / 8 - 18** |  | 9d | 2025-04-02 | 2025-04-11 |  | 57.5d |  |  | 72h |
| 34 | 1.3.1.1 | Shear keys and top hats |  | 9d | 2025-04-02 | 2025-04-11 |  | 57.5d |  | Top hat gang | 72h |
| 35 | 1.3.2 | **Debden (GL A - E / 1 / 7)** |  | 14d | 2025-04-24 | 2025-05-14 |  | 233d |  |  | 112h |
| 36 | 1.3.2.1 | GL A Top Hats |  | 2d | 2025-04-24 | 2025-04-28 | 20 | 233d | 0d | Top hat gang | 16h |
| 37 | 1.3.2.2 | GL B Top Hats |  | 3d | 2025-04-28 | 2025-05-01 | 36 | 233d | 0d | Top hat gang | 24h |
| 38 | 1.3.2.3 | GL C Top Hats |  | 3d | 2025-05-01 | 2025-05-06 | 37 | 233d | 0d | Top hat gang | 24h |
| 39 | 1.3.2.4 | GL D Top Hats |  | 3d | 2025-05-06 | 2025-05-09 | 38 | 233d | 0d | Top hat gang | 24h |
| 40 | 1.3.2.5 | GL E Top Hats |  | 3d | 2025-05-09 | 2025-05-14 | 39 | 233d | 0d | Top hat gang | 24h |
| 41 | 1.3.3 | **GL A - E / 19 - 24** |  | 79d | 2025-05-14 | 2025-09-02 |  | 69d |  |  | 80h |
| 42 | 1.3.3.1 | ISC to instruct GPS MACS not to install top hats in this location until crane mat for Wall D has been removed | milestone | 0d | 2025-05-14 | 2025-05-14 | 40 | 233d |  | ISC |  |
| 43 | 1.3.3.2 | GL A Top Hats |  | 2d | 2025-08-19 | 2025-08-21 | 101 | 0d |  | Top hat gang | 16h |
| 44 | 1.3.3.3 | GL B Top Hats |  | 2d | 2025-08-21 | 2025-08-25 | 43 | 0d |  | Top hat gang | 16h |
| 45 | 1.3.3.4 | GL C Top Hats |  | 2d | 2025-08-25 | 2025-08-27 | 44 | 0d |  | Top hat gang | 16h |
| 46 | 1.3.3.5 | GL D Top Hats |  | 2d | 2025-08-27 | 2025-08-29 | 45 | 0d |  | Top hat gang | 16h |
| 47 | 1.3.3.6 | GL E Top Hats |  | 2d | 2025-08-29 | 2025-09-02 | 46 | 0d |  | Top hat gang | 16h |
| 49 | 1.4 | **Step 1 - Revetment Scour Protection GL 8 - 18 / A - E** |  | 22d | 2025-06-27 | 2025-07-29 |  | 0d |  |  | 392h |
| 50 | 1.4.1 | ISC Complete Capping Beam | milestone | 0d | 2025-06-27 | 2025-06-27 | 51SS | 201d |  |  |  |
| 51 | 1.4.2 | Mobilise landside excavators and dumpers |  | 2d | 2025-06-27 | 2025-07-01 | 29 | 0d |  | Landside | 16h |
| 52 | 1.4.3 | Excavate and remove 3,900m3 / 7,605T |  | 17d | 2025-07-01 | 2025-07-24 | 51, 34 | 0d |  | Landside | 136h |
| 53 | 1.4.4 | Install geotextile and collars |  | 15d | 2025-07-08 | 2025-07-29 | 52SS+5d | 0d |  | Landside | 120h |
| 54 | 1.4.5 | Place rock armour 780m3 / 1,690T |  | 15d | 2025-07-08 | 2025-07-29 | 53SS | 0d |  | Landside | 120h |
| 56 | 1.5 | Seasonal Restriction on Dredging: May - Sept (Inclusive) | manual | 109d | 2025-05-01 | 2025-09-30 |  |  |  |  |  |

| ID | WBS | Task | Type | Duration | Start | Finish | Predecessors | Total slack | Free slack | Resources | Work |
| --- | --- | --- | --- | --- | --- | --- | --- | --- | --- | --- | --- |
| 58 | 1.6 | **Step 2 - Wall D Installation** |  | 162d | 2025-03-20 | 2025-10-29 |  | 42d |  |  | 992h |
| 59 | 1.6.1 | Instruction from ISC for supply of piles Wall D | milestone | 0d | 2025-04-16 | 2025-04-16 | 60SS | 253d |  | ISC |  |
| 60 | 1.6.2 | Pile procurement - tubes |  | 20d | 2025-04-16 | 2025-05-14 | 68SS-20d | 233d | 0d | GPSMACS | 160h |
| 61 | 1.6.3 | Pile procurement - sheets |  | 60d | 2025-03-20 | 2025-06-09 | 79SS-60d | 215d |  | GPSMACS | 480h |
| 62 | 1.6.4 | Pile procurement - sheets alternative EZ38 | manual | 5d | 2025-06-02 | 2025-06-09 | 79SS-5d |  |  | GPSMACS | 40h |
| 63 | 1.6.5 | Instruction from ISC for install of Wall D | milestone | 0d | 2025-04-30 | 2025-04-30 | 68SS-10d | 243d |  | ISC |  |
| 64 | 1.6.6 | **Landside** |  | 31d | 2025-05-13 | 2025-06-25 |  | 1d |  |  | 240h |
| 65 | 1.6.6.1 | ISC construct crane mat | milestone | 0d | 2025-05-14 | 2025-05-14 | 26 | 0d |  | ISC |  |
| 66 | 1.6.6.2 | ISC to remove southern boundary wall ahead of piling | milestone | 0d | 2025-05-13 | 2025-05-13 | 68SS-1d | 234d |  |  |  |
| 67 | 1.6.6.3 | **Install piles GL A - E Combiwall** |  | 27d | 2025-05-14 | 2025-06-20 |  | 0d |  |  | 168h |
| 68 | 1.6.6.3.1 | Set gate |  | 2d | 2025-05-14 | 2025-05-16 | 65 | 0d |  | Landside | 16h |
| 69 | 1.6.6.3.2 | Install 3no. Tubular piles |  | 2d | 2025-05-16 | 2025-05-20 | 68 | 0d |  | Landside | 16h |
| 70 | 1.6.6.3.3 | Move gate |  | 1d | 2025-05-20 | 2025-05-21 | 69 | 0d |  | Landside | 8h |
| 71 | 1.6.6.3.4 | Install 2no. Tubular piles |  | 2d | 2025-05-21 | 2025-05-23 | 70 | 0d |  | Landside | 16h |
| 72 | 1.6.6.3.5 | Move gate |  | 1d | 2025-05-23 | 2025-05-26 | 71 | 0d |  | Landside | 8h |
| 73 | 1.6.6.3.6 | Install 2no. Tubular piles |  | 2d | 2025-05-26 | 2025-05-28 | 72 | 0d |  | Landside | 16h |
| 74 | 1.6.6.3.7 | Move gate |  | 1d | 2025-05-28 | 2025-05-29 | 73 | 0d |  |  |  |
| 75 | 1.6.6.3.8 | Install 2no. Tubular piles |  | 2d | 2025-05-29 | 2025-06-02 | 74 | 0d |  |  |  |
| 76 | 1.6.6.3.9 | Move gate |  | 1d | 2025-06-02 | 2025-06-03 | 75 | 0d |  |  |  |
| 77 | 1.6.6.3.10 | Install 2no. Tubular piles |  | 2d | 2025-06-03 | 2025-06-05 | 76 | 0d |  |  |  |
| 78 | 1.6.6.3.11 | Back drive tubular piles |  | 2d | 2025-06-05 | 2025-06-09 | 77 | 0d |  | Landside | 16h |
| 79 | 1.6.6.3.12 | Install infill sheet piles |  | 3d | 2025-06-09 | 2025-06-12 | 78 | 0d |  | Landside | 24h |
| 80 | 1.6.6.3.13 | Install 11no. Top hats |  | 6d | 2025-06-12 | 2025-06-20 | 79 | 206d |  | Landside | 48h |
| 81 | 1.6.6.4 | **Install piles GL A - D GL 25 monopiles (original scope GL25)** |  | 9d | 2025-06-12 | 2025-06-25 |  | 0d |  |  | 72h |
| 82 | 1.6.6.4.1 | Reconfigure gate |  | 2d | 2025-06-12 | 2025-06-16 | 79 | 0d |  | Landside | 16h |
| 83 | 1.6.6.4.2 | Set gate |  | 1d | 2025-06-16 | 2025-06-17 | 82 | 0d |  | Landside | 8h |
| 84 | 1.6.6.4.3 | Install 3 no. piles |  | 2d | 2025-06-17 | 2025-06-19 | 83 | 0d |  | Landside | 16h |
| 85 | 1.6.6.4.4 | Back drive 3no. Piles |  | 1d | 2025-06-19 | 2025-06-20 | 84 | 0d |  | Landside | 8h |
| 86 | 1.6.6.4.5 | Install 3no. Top hats |  | 3d | 2025-06-20 | 2025-06-25 | 85 | 0d |  | Landside | 24h |

| ID | WBS | Task | Duration | Start | Finish | Predecessors | Total slack | Resources | Work |
| --- | --- | --- | --- | --- | --- | --- | --- | --- | --- |
| 87 | 1.6.7 | **Marine** | 9d | 2025-10-16 | 2025-10-29 |  | 0d |  | 72h |
| 88 | 1.6.7.1 | **Fender Pile** | 4d | 2025-10-16 | 2025-10-22 |  | 0d |  | 32h |
| 89 | 1.6.7.1.1 | UXO Survey and Pre-auger | 1d | 2025-10-16 | 2025-10-17 | 106 | 0d | Marine | 8h |
| 90 | 1.6.7.1.2 | Install pile and back drive to level | 1d | 2025-10-17 | 2025-10-20 | 89 | 0d | Marine | 8h |
| 91 | 1.6.7.1.3 | Install donut fender | 2d | 2025-10-20 | 2025-10-22 | 90 | 0d | Marine | 16h |
| 92 | 1.6.7.2 | **Sheet Piles GL E+** | 5d | 2025-10-22 | 2025-10-29 |  | 0d |  | 40h |
| 93 | 1.6.7.2.1 | Reconfigure gate | 2d | 2025-10-22 | 2025-10-24 | 91 | 0d | Marine | 16h |
| 94 | 1.6.7.2.2 | Set gate | 1d | 2025-10-24 | 2025-10-27 | 93 | 0d | Marine | 8h |
| 95 | 1.6.7.2.3 | Install 6.5no. Piles | 2d | 2025-10-27 | 2025-10-29 | 94 | 0d | Marine | 16h |
| 97 | 1.7 | **Step 3 - Revetment Scour Protection GL 18 - 25 / A - C** | 15d | 2025-07-29 | 2025-08-19 |  | 0d |  | 120h |
| 98 | 1.7.1 | Mobilise landside excavators and dumpers | 2d | 2025-07-29 | 2025-07-31 | 85, 54 | 0d | Landside | 16h |
| 99 | 1.7.2 | Excavate and remove 1,560m3 / 3,861T | 5d | 2025-07-31 | 2025-08-07 | 98 | 0d | Landside | 40h |
| 100 | 1.7.3 | Install geotextile and collars | 4d | 2025-08-07 | 2025-08-13 | 99 | 0d | Landside | 32h |
| 101 | 1.7.4 | Place rock armour 252m3 / 546T | 4d | 2025-08-13 | 2025-08-19 | 100 | 0d | Landside | 32h |
| 103 | 1.8 | Step 4 - ISC Complete Quay Slab Tie In to Wall D | 30d | 2025-09-02 | 2025-10-14 | 101, 47 | 0d | ISC | 240h |
| 105 | 1.9 | **Step 5 - Revetment Scour Protection GL 18 - 25 / C - E** | 25d | 2025-10-14 | 2025-11-18 |  | 0d |  | 128h |
| 106 | 1.9.1 | Mobilise GPS Boxer | 2d | 2025-10-14 | 2025-10-16 | 103, 56 | 0d | Marine | 16h |
| 107 | 1.9.2 | Excavate and remove 1,040m3 / 2,575T | 6d | 2025-10-29 | 2025-11-06 | 95 | 0d | Marine | 48h |
| 108 | 1.9.3 | Install geotextile and collars | 4d | 2025-11-06 | 2025-11-12 | 107 | 0d | Marine | 32h |
| 109 | 1.9.4 | Place rock armour 168m3 / 364T | 4d | 2025-11-12 | 2025-11-18 | 108 | 0d | Marine | 32h |
| 111 | 1.10 | **Step 6 - Berth Pocket Scour Protection** | 44d | 2025-11-18 | 2026-02-02 |  | 0d |  | 352h |
| 112 | 1.10.1 | Dredge 50% (3,150m3 / 5,650T) | 15d | 2025-11-18 | 2025-12-09 | 109 | 0d | Marine | 120h |
| 113 | 1.10.2 | Place rock armour 50% (600m3 / 1,320T) | 7d | 2025-12-09 | 2025-12-18 | 112 | 0d | Marine | 56h |
| 114 | 1.10.3 | Dredge 50% (3,150m3 / 5,650T) | 15d | 2025-12-18 | 2026-01-22 | 113 | 0d | Marine | 120h |
| 115 | 1.10.4 | Place rock armour 50% (600m3 / 1,320T) | 7d | 2026-01-22 | 2026-02-02 | 114 | 0d | Marine | 56h |

| ID | WBS | Task | Type | Duration | Start | Finish | Predecessors | Total slack | Resources | Work |
| --- | --- | --- | --- | --- | --- | --- | --- | --- | --- | --- |
| 117 | 1.11 | **Quayside Furniture (original scope)** |  | 55d | 2026-02-02 | 2026-04-20 |  | 0d |  | 400h |
| 118 | 1.11.1 | Quayside concrete deck ready to receive furniture - ISC | milestone | 0d | 2026-02-02 | 2026-02-02 | 115 | 0d | ISC |  |
| 119 | 1.11.2 | Installation of fendering, ladders, bollards, etc |  | 50d | 2026-02-02 | 2026-04-13 | 118 | 0d | GPS Boxer | 400h |
| 120 | 1.11.3 | Demobilisation |  | 5d | 2026-04-13 | 2026-04-20 | 119 | 0d |  |  |
