# T-174-CORYW-23 Tender Programme Rev 3 - Option 2

Schedule from MS Project, 2024-02-01 to 2025-09-30.

## Calendars

- Standard: Mon-Fri 08:00-12:00, 13:00-17:00; Sat-Sun off. Exceptions (off unless hours are given): 2024-08-26 (Bank hol).

## Resources

| Resource |
| --- |
| Excavator and Movax |
| CPT rig |
| 350T crane |
| 350T crane and landside pile gang |
| Dredge Barge |
| ISC |
| GPS Boxer |
| GPS 601 Crane Barge |
| UXO |
| Slave crane and landside pile gang |
| TM20LR |
| TM20LR Rig and Crew |
| CPT rig and Crew |
| TM20 Rig |
| slave crane and crew |
| 160T crane and landside pile gang |
| 160T crane and second gate |
| 250T crane |
| 250T crane and excavator gate |

## Schedule

| ID | WBS | Task | Type | Duration | Start | Finish | Predecessors | Total slack | Free slack | Resources | Work |
| --- | --- | --- | --- | --- | --- | --- | --- | --- | --- | --- | --- |
| 1 | 1 | **T-174-CORYW-23 Tender Programme ISC Rev 3** |  | 433d | 2024-02-01 | 2025-09-30 |  | 0d |  |  | 2728h |
| 2 | 1.1 | GPS MACS Contract Award | milestone | 0d | 2024-05-20 | 2024-05-20 |  | 356d |  |  |  |
| 4 | 1.2 | **Procurement** |  | 65d | 2024-05-20 | 2024-08-16 |  | 273d |  |  |  |
| 5 | 1.2.1 | **Key Plant** |  | 40d | 2024-05-20 | 2024-07-12 |  | 316d |  |  |  |
| 6 | 1.2.1.1 | Barges and Vessels |  | 8w | 2024-05-20 | 2024-07-12 |  | 316d |  |  |  |
| 7 | 1.2.1.2 | Cranes |  | 4w | 2024-05-20 | 2024-06-14 |  | 336d |  |  |  |
| 8 | 1.2.2 | **Key Materials** |  | 65d | 2024-05-20 | 2024-08-16 |  | 273d |  |  |  |
| 9 | 1.2.2.1 | Sheet Piles |  | 13w | 2024-05-20 | 2024-08-16 |  | 273d | 0d |  |  |
| 10 | 1.2.2.2 | Tubular Piles |  | 12w | 2024-05-20 | 2024-08-09 |  | 286d | 0d |  |  |
| 12 | 1.3 | **Site Works** |  | 433d | 2024-02-01 | 2025-09-30 |  | 0d |  |  | 2728h |
| 13 | 1.3.1 | **Pre-Commencement Milestones** |  | 433d | 2024-02-01 | 2025-09-30 |  | 0d |  |  |  |
| 14 | 1.3.1.1 | Installation of pile mat - ISC | milestone | 0d | 2024-07-22 | 2024-07-22 | 21SS | 311d |  | ISC |  |
| 15 | 1.3.1.2 | Clear hard standing and break out concrete along pile line - ISC | milestone | 0d | 2024-07-22 | 2024-07-22 | 21SS | 311d |  | ISC |  |
| 16 | 1.3.1.3 | Reduce dig quayside to top of pile level - ISC | milestone | 0d | 2024-07-22 | 2024-07-22 | 21SS | 311d |  | ISC |  |
| 17 | 1.3.1.4 | 2024 Seasonal Restriction on Marine Piling and Dredging | manual | 173d | 2024-02-01 | 2024-10-01 |  |  |  |  |  |
| 18 | 1.3.1.5 | 2025 Seasonal Restriction on Marine Piling and Dredging | manual | 173d | 2025-02-01 | 2025-09-30 |  |  |  |  |  |
| 20 | 1.3.2 | **Landside Piling** |  | 84d | 2024-07-22 | 2024-11-15 |  | 227d |  |  | 864h |
| 21 | 1.3.2.1 | Mobilise landside plant and equipment |  | 1d | 2024-07-22 | 2024-07-22 | 25SS-20d | 300d | 0d |  |  |
| 22 | 1.3.2.2 | CPT magno probe UXO survey |  | 10d | 2024-07-23 | 2024-08-05 | 21 | 300d | 0d | CPT rig and Crew | 80h |
| 23 | 1.3.2.3 | Pre-auger pile line |  | 5d | 2024-07-30 | 2024-08-05 | 22SS+5d | 300d |  | TM20LR Rig and Crew | 40h |
| 24 | 1.3.2.4 | **New Flood Wall** |  | 64d | 2024-08-19 | 2024-11-15 |  | 217d |  |  | 248h |
| 25 | 1.3.2.4.1 | Install sheet piles back wall |  | 8d | 2024-08-19 | 2024-08-29 | 9 | 273d | 0d | TM20 Rig; slave crane and crew | 128h |
| 26 | 1.3.2.4.2 | Install sheet piles northern return wall to GL C |  | 5d | 2024-10-21 | 2024-10-25 | 38 | 211d | 0d | 350T crane and landside pile gang | 40h |
| 27 | 1.3.2.4.3 | Combiwall |  | 10d | 2024-11-04 | 2024-11-15 | 34 | 226d | 0d | 350T crane and landside pile gang | 80h |

| ID | WBS | Task | Type | Duration | Start | Finish | Predecessors | Total slack | Free slack | Constraint | Resources | Work |
| --- | --- | --- | --- | --- | --- | --- | --- | --- | --- | --- | --- | --- |
| 28 | 1.3.2.5 | **Quayside Piles** |  | 59d | 2024-08-12 | 2024-11-01 |  | 230d |  |  |  | 496h |
| 29 | 1.3.2.5.1 | Commence delivery of tubular piles 20 stock on site |  | 2w | 2024-08-12 | 2024-08-23 | 10 | 286d | 0d |  |  |  |
| 30 | 1.3.2.5.2 | 350T crane mob and pile gate set up |  | 2d | 2024-08-22 | 2024-08-23 | 29FS-2d | 286d |  |  | 350T crane and landside pile gang | 16h |
| 31 | 1.3.2.5.3 | GL A / 8 - 22 and GL B 17 / 22 |  | 10d | 2024-09-09 | 2024-09-20 |  | 226d | 0d | start no earlier than 2024-09-09 | 350T crane and landside pile gang | 80h |
| 32 | 1.3.2.5.4 | GL B / 8 - 16 and GL C 8 / 10 |  | 5d | 2024-09-23 | 2024-09-27 | 31 | 226d | 0d |  | 350T crane and landside pile gang | 40h |
| 33 | 1.3.2.5.5 | GL C / 11 - 22 |  | 5d | 2024-09-30 | 2024-10-04 | 32 | 226d | 0d |  | 350T crane and landside pile gang | 40h |
| 34 | 1.3.2.5.6 | GL A, B, C / 23 and A, B, C / 24 |  | 5d | 2024-10-28 | 2024-11-01 | 26 | 226d | 0d |  | 350T crane and landside pile gang | 40h |
| 35 | 1.3.2.5.7 | **Upriver Landside Piles** |  | 10d | 2024-10-07 | 2024-10-18 |  | 211d |  |  |  | 80h |
| 36 | 1.3.2.5.7.1 | Extend pile mat upriver | milestone | 0d | 2024-10-07 | 2024-10-07 | 37SS | 257d |  |  |  |  |
| 37 | 1.3.2.5.7.2 | GL A / 1 - 7 and GL B / 4 - 7 |  | 5d | 2024-10-07 | 2024-10-11 | 33 | 211d | 0d |  | 350T crane and landside pile gang | 40h |
| 38 | 1.3.2.5.7.3 | GL B / 1 - 6 and GL C / 1 - 7 |  | 5d | 2024-10-14 | 2024-10-18 | 37 | 211d | 0d |  | 350T crane and landside pile gang | 40h |
| 39 | 1.3.2.5.8 | Prep pile head and install 80no. top hat |  | 25d | 2024-09-30 | 2024-11-01 | 33SS | 237d |  |  | Slave crane and landside pile gang | 200h |
| 41 | 1.3.3 | **Demolition of Existing Wharf** |  | 82d | 2024-09-30 | 2025-01-21 |  | 126d |  |  |  | 952h |
| 42 | 1.3.3.1 | **Marine** |  | 47d | 2024-09-30 | 2024-12-03 |  | 126d |  |  |  | 472h |
| 43 | 1.3.3.1.1 | Mobilise dredge barge |  | 2d | 2024-09-30 | 2024-10-01 | 17FS-2d | 126d | 0d |  | GPS Boxer | 16h |
| 44 | 1.3.3.1.2 | Dredge berth pocket in front of existing berth at downriver end |  | 5d | 2024-10-02 | 2024-10-08 | 43 | 126d | 0d |  | GPS Boxer | 40h |
| 45 | 1.3.3.1.3 | Dredge campshed at northern end |  | 5d | 2024-10-09 | 2024-10-15 | 44 | 245d | 0d |  | GPS Boxer | 40h |
| 46 | 1.3.3.1.4 | Demob Dredge Barge |  | 5d | 2024-10-16 | 2024-10-22 | 45 | 245d |  |  | GPS Boxer | 40h |
| 47 | 1.3.3.1.5 | Mobilise crane barge GPS 601 |  | 2d | 2024-10-02 | 2024-10-03 | 48SS-5d | 258d |  |  | GPS 601 Crane Barge | 16h |
| 48 | 1.3.3.1.6 | Demolish existing deck and substructure |  | 8w | 2024-10-09 | 2024-12-03 | 44 | 126d | 0d |  | GPS 601 Crane Barge | 320h |
| 49 | 1.3.3.2 | **Landside (ISC)** |  | 50d | 2024-11-13 | 2025-01-21 |  | 180d |  |  |  | 480h |
| 50 | 1.3.3.2.1 | Excavate behind existing river wall and expose anchor wall. Estimated 9,800m3 / 18,600T |  | 25d | 2024-11-13 | 2024-12-17 | 48FS-15d | 185d | 0d |  | ISC | 200h |
| 51 | 1.3.3.2.2 | Remove anchor wall and piles |  | 15d | 2024-11-27 | 2024-12-17 | 50SS+10d | 185d | 5d |  | ISC | 120h |
| 52 | 1.3.3.2.3 | Revetment construction |  | 20d | 2024-12-25 | 2025-01-21 | 62FS-15d, 51 | 180d |  |  | ISC | 160h |

| ID | WBS | Task | Type | Duration | Start | Finish | Predecessors | Total slack | Free slack | Resources | Work |
| --- | --- | --- | --- | --- | --- | --- | --- | --- | --- | --- | --- |
| 54 | 1.3.4 | **Marine Piling** |  | 55d | 2024-10-30 | 2025-01-14 |  | 147d |  |  | 440h |
| 55 | 1.3.4.1 | UXO survey 50% (downriver end) |  | 5d | 2024-10-30 | 2024-11-05 | 48SS+3w | 235d |  | UXO | 40h |
| 56 | 1.3.4.2 | ISC Contruct crane mat to allow 350T crane to cross sheet pile wall | milestone | 0d | 2024-11-18 | 2024-11-18 | 57SS | 227d |  | ISC |  |
| 57 | 1.3.4.3 | Install 20 no. piles GL 16 - 25 (landside crane) |  | 15d | 2024-11-18 | 2024-12-06 | 27 | 211d | 0d | 350T crane and landside pile gang | 120h |
| 58 | 1.3.4.4 | Demob 350T crane |  | 1d | 2024-12-09 | 2024-12-09 | 57 | 211d |  | 350T crane and landside pile gang | 8h |
| 59 | 1.3.4.5 | UXO survey 50% (upriver end) |  | 5d | 2024-11-28 | 2024-12-04 | 48FS-4d | 126d | 0d | UXO | 40h |
| 60 | 1.3.4.6 | Install 19no. Tubular Piles GL 1 - 8 (crane barge) |  | 14d | 2024-12-05 | 2024-12-24 | 48, 59 | 126d | 0d | GPS 601 Crane Barge | 112h |
| 61 | 1.3.4.7 | Install sheet piles Sp301 - 302A (25no. AZ28-700) (crane barge) |  | 5d | 2024-12-25 | 2024-12-31 | 60 | 126d | 0d | GPS 601 Crane Barge | 40h |
| 62 | 1.3.4.8 | Install 14no. Tubular Piles GL 9 - 15 (crane barge) |  | 10d | 2025-01-01 | 2025-01-14 | 61 | 126d | 0d | GPS 601 Crane Barge | 80h |
| 64 | 1.3.5 | **Campshed** |  | 7d | 2025-01-15 | 2025-01-23 |  | 126d |  |  | 56h |
| 65 | 1.3.5.1 | Final Grading |  | 2d | 2025-01-15 | 2025-01-16 | 62 | 126d | 0d | GPS 601 Crane Barge | 16h |
| 66 | 1.3.5.2 | Demob GPS 601 crane barge |  | 5d | 2025-01-17 | 2025-01-23 | 65 | 178d |  | GPS 601 Crane Barge | 40h |
| 68 | 1.3.6 | **Quayside Furniture** |  | 52d | 2025-01-17 | 2025-03-31 |  | 16d |  |  | 416h |
| 69 | 1.3.6.1 | Quayside concrete deck ready to receive furniture - ISC | milestone, manual | 0d | 2025-02-10 | 2025-02-10 | 71SS |  |  | ISC |  |
| 70 | 1.3.6.2 | Mobilise GPS Boxer Crane Barge |  | 2d | 2025-01-17 | 2025-01-20 | 65 | 126d | 0d | GPS Boxer | 16h |
| 71 | 1.3.6.3 | Installation of fendering, ladders, bollards, etc |  | 50d | 2025-01-21 | 2025-03-31 | 70 | 126d | 0d | GPS Boxer | 400h |
| 73 | 1.3.7 | Demobilisation |  | 5d | 2025-04-01 | 2025-04-07 | 71 | 126d |  |  |  |
