# C-121 Programme to Complete 28.11.24

Schedule from MS Project, 2025-04-09 to 2026-04-24.

## Calendars

- Standard: Mon-Fri 08:00-12:00, 13:00-17:00; Sat-Sun off. Exceptions (off unless hours are given): 2025-04-12 08:00-12:00, 13:00-17:00 (12.04), 2025-04-18 (Easter 25), 2025-12-22 to 2026-01-02 (Xmas and NY 25).

## Resources

| Resource |
| --- |
| WIlcarry 171 |
| WIlcarry 1717 |
| v |
| GPS Boxer |
| Landside |
| Landside gang |
| Landside crane |
| ICS |
| Ayesa |
| EDD |
| ISC |
| 1 |
| WIlcarry 1711 |
| Marine |
| crane barge |
| Top hat gang |
| GPSMACS |
| GPS MACS |

## Schedule

| ID | WBS | Task | Type | Duration | Start | Finish | Predecessors | Total slack | Free slack | Constraint | Resources | Work |
| --- | --- | --- | --- | --- | --- | --- | --- | --- | --- | --- | --- | --- |
| 1 | 1 | **C-121 Cory WTS Target Programme 09.04.25** |  | 263d | 2025-04-09 | 2026-04-24 |  | 0d |  |  |  | 2680h |
| 2 | 1.1 | **Marine Piling** |  | 5d | 2025-04-09 | 2025-04-14 |  | 0d |  |  |  | 40h |
| 3 | 1.1.1 | Demob crane barge |  | 5d | 2025-04-09 | 2025-04-14 |  | 0d |  |  | crane barge | 40h |
| 5 | 1.2 | **Quayside Piling** |  | 62d | 2025-04-09 | 2025-07-03 |  | 2d |  |  |  | 272h |
| 6 | 1.2.1 | ISC extend landside crane mat |  | 4d | 2025-04-09 | 2025-04-12 |  | 259d |  |  | ISC | 32h |
| 7 | 1.2.2 | **Mobilisation** |  | 2.5d | 2025-04-11 | 2025-04-14 |  | 0d |  |  |  | 24h |
| 8 | 1.2.2.1 | Mobilise 400T crawler crane |  | 2d | 2025-04-11 | 2025-04-12 | 3SS+2d | 0d |  |  | Landside | 16h |
| 9 | 1.2.2.2 | ISC provide tracking route to workfront | milestone, manual | 0d | 2025-04-14 | 2025-04-14 | 8 |  |  |  | ISC |  |
| 10 | 1.2.2.3 | Mobilise gate, hammers, and equipment |  | 1d | 2025-04-11 | 2025-04-11 | 8SS | 260d |  |  | Landside | 8h |
| 11 | 1.2.3 | **Piling (Orignial Scope)** |  | 10d | 2025-04-14 | 2025-04-28 |  | 0d |  |  |  | 80h |
| 12 | 1.2.3.1 | Pile gate configuration |  | 2d | 2025-04-14 | 2025-04-15 | 8 | 0d |  |  | Landside | 16h |
| 13 | 1.2.3.2 | GL B / 1 - 7 Landside Piles (3no.) |  | 1.5d | 2025-04-16 | 2025-04-17 | 12 | 0d |  |  | Landside | 12h |
| 14 | 1.2.3.3 | GL C / 1 - 7 Landside Piles (9no) |  | 4.5d | 2025-04-17 | 2025-04-24 | 13 | 0d |  |  | Landside | 36h |
| 15 | 1.2.3.4 | GL D / 1 - 7 Landside Piles (4no.) |  | 2d | 2025-04-25 | 2025-04-28 | 14 | 0d |  |  | Landside | 16h |
| 16 | 1.2.4 | **Additional Piles at Debden GL 1 - 7 / A - C)** |  | 28d | 2025-04-09 | 2025-05-16 |  | 0d |  |  |  | 112h |
| 17 | 1.2.4.1 | ISC instruction issued to GPS MACS for pile supply and install | milestone | 0d | 2025-04-09 | 2025-04-09 |  | 4d | 0d | start no earlier than 2025-04-09 | ISC |  |
| 18 | 1.2.4.2 | GPS MACS supply quote for additional piles |  | 5d | 2025-04-09 | 2025-04-14 | 17 | 4d | 0d |  |  |  |
| 19 | 1.2.4.3 | Price agreed for install |  | 5d | 2025-04-15 | 2025-04-22 | 18 | 4d |  |  |  |  |
| 20 | 1.2.4.4 | Procurement of 7no. Piles - lead estimated |  | 5d | 2025-04-09 | 2025-04-14 | 17 | 9d | 0d |  |  |  |
| 21 | 1.2.4.5 | Deliver 7no. Piles |  | 7d | 2025-04-15 | 2025-04-24 | 20 | 9d | 0d |  |  |  |
| 22 | 1.2.4.6 | Install 7no. Piles |  | 11d | 2025-04-29 | 2025-05-13 | 21SS, 15, 19 | 0d |  |  | Landside | 88h |
| 23 | 1.2.4.7 | Install 7no. Top hats |  | 3d | 2025-05-14 | 2025-05-16 | 22 | 0d |  |  | Landside | 24h |
| 24 | 1.2.5 | **Demobilisation** |  | 2d | 2025-07-02 | 2025-07-03 |  | 0d |  |  |  | 24h |
| 25 | 1.2.5.1 | ISC provide tracking route for 300T crane to demob location | milestone | 0d | 2025-07-02 | 2025-07-02 | 26SS | 203d |  |  | ISC |  |
| 26 | 1.2.5.2 | Demobilise 300T crawler crane |  | 2d | 2025-07-02 | 2025-07-03 | 88 | 0d |  |  | Landside | 16h |
| 27 | 1.2.5.3 | Demob plant and equipment |  | 1d | 2025-07-02 | 2025-07-02 | 26SS | 202d |  |  | Landside | 8h |

| ID | WBS | Task | Type | Duration | Start | Finish | Predecessors | Total slack | Free slack | Constraint | Resources | Work |
| --- | --- | --- | --- | --- | --- | --- | --- | --- | --- | --- | --- | --- |
| 29 | 1.3 | **Top Hats** |  | 107d | 2025-04-11 | 2025-09-08 |  | 0d |  |  |  | 192h |
| 30 | 1.3.1 | **GL A - E / 8 - 18** |  | 0d | 2025-04-11 | 2025-04-11 |  | 0d |  |  |  |  |
| 31 | 1.3.1.1 | Shear keys and top hats | milestone, manual | 0d | 2025-04-11 | 2025-04-11 |  |  |  |  |  |  |
| 32 | 1.3.2 | **Debden (GL A - E / 1 / 7)** |  | 14d | 2025-04-29 | 2025-05-16 |  | 235d |  |  |  | 112h |
| 33 | 1.3.2.1 | GL A Top Hats |  | 2d | 2025-04-29 | 2025-04-30 | 15 | 235d | 0d |  | Top hat gang | 16h |
| 34 | 1.3.2.2 | GL B Top Hats |  | 3d | 2025-05-01 | 2025-05-05 | 33 | 235d | 0d |  | Top hat gang | 24h |
| 35 | 1.3.2.3 | GL C Top Hats |  | 3d | 2025-05-06 | 2025-05-08 | 34 | 235d | 0d |  | Top hat gang | 24h |
| 36 | 1.3.2.4 | GL D Top Hats |  | 3d | 2025-05-09 | 2025-05-13 | 35 | 235d | 0d |  | Top hat gang | 24h |
| 37 | 1.3.2.5 | GL E Top Hats |  | 3d | 2025-05-14 | 2025-05-16 | 36 | 235d | 0d |  | Top hat gang | 24h |
| 38 | 1.3.3 | **GL A - E / 19 - 24** |  | 81d | 2025-05-16 | 2025-09-08 |  | 71d |  |  |  | 80h |
| 39 | 1.3.3.1 | ISC to instruct GPS MACS not to install top hats in this location until crane mat for Wall D has been removed | milestone | 0d | 2025-05-16 | 2025-05-16 | 37 | 235d |  |  | ISC |  |
| 40 | 1.3.3.2 | GL A Top Hats |  | 2d | 2025-08-26 | 2025-08-27 | 103 | 0d |  |  | Top hat gang | 16h |
| 41 | 1.3.3.3 | GL B Top Hats |  | 2d | 2025-08-28 | 2025-08-29 | 40 | 0d |  |  | Top hat gang | 16h |
| 42 | 1.3.3.4 | GL C Top Hats |  | 2d | 2025-09-01 | 2025-09-02 | 41 | 0d |  |  | Top hat gang | 16h |
| 43 | 1.3.3.5 | GL D Top Hats |  | 2d | 2025-09-03 | 2025-09-04 | 42 | 0d |  |  | Top hat gang | 16h |
| 44 | 1.3.3.6 | GL E Top Hats |  | 2d | 2025-09-05 | 2025-09-08 | 43 | 0d |  |  | Top hat gang | 16h |
| 46 | 1.4 | **Step 1 - Revetment Scour Protection GL 8 - 18 / A - E** |  | 22d | 2025-07-04 | 2025-08-04 |  | 0d |  |  |  | 392h |
| 47 | 1.4.1 | ISC Complete Capping Beam | milestone | 0d | 2025-07-04 | 2025-07-04 | 48SS | 201d |  |  |  |  |
| 48 | 1.4.2 | Mobilise landside excavators and dumpers |  | 2d | 2025-07-04 | 2025-07-07 | 26 | 0d |  |  | Landside | 16h |
| 49 | 1.4.3 | Excavate and remove 3,900m3 / 7,605T |  | 17d | 2025-07-08 | 2025-07-30 | 48 | 0d |  |  | Landside | 136h |
| 50 | 1.4.4 | Install geotextile and collars |  | 15d | 2025-07-15 | 2025-08-04 | 49SS+5d | 0d |  |  | Landside | 120h |
| 51 | 1.4.5 | Place rock armour 780m3 / 1,690T |  | 15d | 2025-07-15 | 2025-08-04 | 50SS | 0d |  |  | Landside | 120h |
| 53 | 1.5 | Seasonal Restriction on Dredging: May - Sept (Inclusive) | manual | 109d | 2025-05-01 | 2025-09-30 |  |  |  |  |  |  |
| 55 | 1.6 | **Step 2 - Wall D Installation** |  | 150d | 2025-04-09 | 2025-11-04 |  | 28d |  |  |  | 544h |
| 56 | 1.6.1 | Instruction from ISC for supply of piles Wall D | milestone | 0d | 2025-04-09 | 2025-04-09 |  | 248d | 5d | start no earlier than 2025-04-09 | ISC |  |
| 57 | 1.6.2 | Pile procurement - tubes |  | 15d | 2025-04-15 | 2025-05-06 | 56, 20 | 243d |  |  | GPSMACS | 120h |
| 58 | 1.6.3 | Instruction from ISC for supply of sheet piles at 15m | milestone | 0d | 2025-04-09 | 2025-04-09 |  | 253d | 0d |  | ISC |  |
| 59 | 1.6.4 | Pile procurement - sheets |  | 10d | 2025-04-09 | 2025-04-22 | 58 | 253d |  |  | GPSMACS | 80h |
| 60 | 1.6.5 | Instruction from ISC for install of Wall D | milestone | 0d | 2025-04-09 | 2025-04-09 |  | 253d | 0d |  | ISC |  |
| 61 | 1.6.6 | GPS MACS to supply quote for Wall D install |  | 5d | 2025-04-09 | 2025-04-14 | 60 | 253d | 0d |  | GPSMACS | 40h |
| 62 | 1.6.7 | Quote for installation agreed |  | 5d | 2025-04-15 | 2025-04-22 | 61 | 253d |  |  | ISC | 40h |
| 63 | 1.6.8 | ISC construct crane mat | milestone | 0d | 2025-05-16 | 2025-05-16 | 23 | 0d |  |  | ISC |  |
| 64 | 1.6.9 | ISC to remove southern boundary wall ahead of piling | milestone | 0d | 2025-05-20 | 2025-05-20 | 66 | 233d |  |  | ISC |  |

| ID | WBS | Task | Duration | Start | Finish | Predecessors | Total slack | Resources | Work |
| --- | --- | --- | --- | --- | --- | --- | --- | --- | --- |
| 65 | 1.6.10 | **Piling** | 23d | 2025-05-19 | 2025-06-18 |  | 0d |  | 120h |
| 66 | 1.6.10.1 | Set gate | 2d | 2025-05-19 | 2025-05-20 | 63 | 0d | Landside | 16h |
| 67 | 1.6.10.2 | Install 2no. Tubular piles | 2d | 2025-05-21 | 2025-05-22 | 66 | 0d | Landside | 16h |
| 68 | 1.6.10.3 | Move gate | 1d | 2025-05-23 | 2025-05-23 | 67 | 0d | Landside | 8h |
| 69 | 1.6.10.4 | Install 3no. Tubular piles | 2d | 2025-05-26 | 2025-05-27 | 68 | 0d | Landside | 16h |
| 70 | 1.6.10.5 | Move gate | 1d | 2025-05-28 | 2025-05-28 | 69 | 0d | Landside | 8h |
| 71 | 1.6.10.6 | Install 2no. Tubular piles | 2d | 2025-05-29 | 2025-05-30 | 70 | 0d | Landside | 16h |
| 72 | 1.6.10.7 | Move gate | 1d | 2025-06-02 | 2025-06-02 | 71 | 0d |  |  |
| 73 | 1.6.10.8 | Install 2no. Tubular piles | 2d | 2025-06-03 | 2025-06-04 | 72 | 0d |  |  |
| 74 | 1.6.10.9 | Move gate | 1d | 2025-06-05 | 2025-06-05 | 73 | 0d |  |  |
| 75 | 1.6.10.10 | Install 1no. Tubular piles | 2d | 2025-06-06 | 2025-06-09 | 74 | 0d |  |  |
| 76 | 1.6.10.11 | Move gate | 1d | 2025-06-10 | 2025-06-10 | 75 | 0d |  |  |
| 77 | 1.6.10.12 | Install 1no. Tubular piles | 1d | 2025-06-11 | 2025-06-11 | 76 | 0d |  |  |
| 78 | 1.6.10.13 | Back drive tubular piles | 2d | 2025-06-12 | 2025-06-13 | 77 | 0d | Landside | 16h |
| 79 | 1.6.10.14 | Install infill sheet piles | 3d | 2025-06-16 | 2025-06-18 | 78 | 0d | Landside | 24h |
| 80 | 1.6.11 | **Top Hats and Profiling** | 9d | 2025-06-19 | 2025-07-01 |  | 0d |  | 72h |
| 81 | 1.6.11.1 | Cut out pile and weld angle to tubes | 5d | 2025-06-19 | 2025-06-25 | 79 | 207d |  |  |
| 82 | 1.6.11.2 | Weld angle to sheets | 5d | 2025-06-19 | 2025-06-25 | 79 | 207d |  |  |
| 83 | 1.6.11.3 | **Install piles GL A - D GL 25 monopiles (original scope GL25)** | 9d | 2025-06-19 | 2025-07-01 |  | 0d |  | 72h |
| 84 | 1.6.11.3.1 | Reconfigure gate | 2d | 2025-06-19 | 2025-06-20 | 79 | 0d | Landside | 16h |
| 85 | 1.6.11.3.2 | Set gate | 1d | 2025-06-23 | 2025-06-23 | 84 | 0d | Landside | 8h |
| 86 | 1.6.11.3.3 | Install 3 no. piles | 2d | 2025-06-24 | 2025-06-25 | 85 | 0d | Landside | 16h |
| 87 | 1.6.11.3.4 | Back drive 3no. Piles | 1d | 2025-06-26 | 2025-06-26 | 86 | 0d | Landside | 8h |
| 88 | 1.6.11.3.5 | Install 3no. Top hats | 3d | 2025-06-27 | 2025-07-01 | 87 | 0d | Landside | 24h |

| ID | WBS | Task | Duration | Start | Finish | Predecessors | Total slack | Resources | Work |
| --- | --- | --- | --- | --- | --- | --- | --- | --- | --- |
| 89 | 1.6.12 | **Marine** | 9d | 2025-10-23 | 2025-11-04 |  | 0d |  | 72h |
| 90 | 1.6.12.1 | **Fender Pile** | 4d | 2025-10-23 | 2025-10-28 |  | 0d |  | 32h |
| 91 | 1.6.12.1.1 | UXO Survey and Pre-auger | 1d | 2025-10-23 | 2025-10-23 | 108 | 0d | Marine | 8h |
| 92 | 1.6.12.1.2 | Install pile and back drive to level | 1d | 2025-10-24 | 2025-10-24 | 91 | 0d | Marine | 8h |
| 93 | 1.6.12.1.3 | Install donut fender | 2d | 2025-10-27 | 2025-10-28 | 92 | 0d | Marine | 16h |
| 94 | 1.6.12.2 | **Sheet Piles GL E+** | 5d | 2025-10-29 | 2025-11-04 |  | 0d |  | 40h |
| 95 | 1.6.12.2.1 | Reconfigure gate | 2d | 2025-10-29 | 2025-10-30 | 93 | 0d | Marine | 16h |
| 96 | 1.6.12.2.2 | Set gate | 1d | 2025-10-31 | 2025-10-31 | 95 | 0d | Marine | 8h |
| 97 | 1.6.12.2.3 | Install 6.5no. Piles | 2d | 2025-11-03 | 2025-11-04 | 96 | 0d | Marine | 16h |
| 99 | 1.7 | **Step 3 - Revetment Scour Protection GL 18 - 25 / A - C** | 15d | 2025-08-05 | 2025-08-25 |  | 0d |  | 120h |
| 100 | 1.7.1 | Mobilise landside excavators and dumpers | 2d | 2025-08-05 | 2025-08-06 | 87, 51 | 0d | Landside | 16h |
| 101 | 1.7.2 | Excavate and remove 1,560m3 / 3,861T | 5d | 2025-08-07 | 2025-08-13 | 100 | 0d | Landside | 40h |
| 102 | 1.7.3 | Install geotextile and collars | 4d | 2025-08-14 | 2025-08-19 | 101 | 0d | Landside | 32h |
| 103 | 1.7.4 | Place rock armour 252m3 / 546T | 4d | 2025-08-20 | 2025-08-25 | 102 | 0d | Landside | 32h |
| 105 | 1.8 | Step 4 - ISC Complete Quay Slab Tie In to Wall D | 30d | 2025-09-09 | 2025-10-20 | 103, 44 | 0d | ISC | 240h |
| 107 | 1.9 | **Step 5 - Revetment Scour Protection GL 18 - 25 / C - E** | 25d | 2025-10-21 | 2025-11-24 |  | 0d |  | 128h |
| 108 | 1.9.1 | Mobilise GPS Boxer | 2d | 2025-10-21 | 2025-10-22 | 105, 53 | 0d | Marine | 16h |
| 109 | 1.9.2 | Excavate and remove 1,040m3 / 2,575T | 6d | 2025-11-05 | 2025-11-12 | 97 | 0d | Marine | 48h |
| 110 | 1.9.3 | Install geotextile and collars | 4d | 2025-11-13 | 2025-11-18 | 109 | 0d | Marine | 32h |
| 111 | 1.9.4 | Place rock armour 168m3 / 364T | 4d | 2025-11-19 | 2025-11-24 | 110 | 0d | Marine | 32h |
| 113 | 1.10 | **Step 6 - Berth Pocket Scour Protection** | 44d | 2025-11-25 | 2026-02-06 |  | 0d |  | 352h |
| 114 | 1.10.1 | Dredge 50% (3,150m3 / 5,650T) | 15d | 2025-11-25 | 2025-12-15 | 111 | 0d | Marine | 120h |
| 115 | 1.10.2 | Place rock armour 50% (600m3 / 1,320T) | 7d | 2025-12-16 | 2026-01-07 | 114 | 0d | Marine | 56h |
| 116 | 1.10.3 | Dredge 50% (3,150m3 / 5,650T) | 15d | 2026-01-08 | 2026-01-28 | 115 | 0d | Marine | 120h |
| 117 | 1.10.4 | Place rock armour 50% (600m3 / 1,320T) | 7d | 2026-01-29 | 2026-02-06 | 116 | 0d | Marine | 56h |

| ID | WBS | Task | Type | Duration | Start | Finish | Predecessors | Total slack | Resources | Work |
| --- | --- | --- | --- | --- | --- | --- | --- | --- | --- | --- |
| 119 | 1.11 | **Quayside Furniture (original scope)** |  | 55d | 2026-02-06 | 2026-04-24 |  | 0d |  | 400h |
| 120 | 1.11.1 | Quayside concrete deck ready to receive furniture - ISC | milestone | 0d | 2026-02-06 | 2026-02-06 | 117 | 0d | ISC |  |
| 121 | 1.11.2 | Installation of fendering, ladders, bollards, etc |  | 50d | 2026-02-09 | 2026-04-17 | 120 | 0d | GPS Boxer | 400h |
| 122 | 1.11.3 | Demobilisation |  | 5d | 2026-04-20 | 2026-04-24 | 121 | 0d |  |  |
